How a schedule from OmniPlan changed from version to version. A marks actual dates.

## Version 1 (saved 2016-04-26)

Note of the change: OmniPlan

| ID | WBS | Task | Predecessors | Complete | Constraint |
| --- | --- | --- | --- | --- | --- |
| 1 | 1 | **Offload unwanted or time-consuming services/responsibilities.** |  |  |  |
| 2 |  | Migrate/remove Redmine |  | 100% |  |
| 3 | 1.2 | **Migrate RT to secondary provider or utilize RT engineers to upgrade our installation. Investigate providers.** |  |  |  |
| 4 |  | Research which provider or hosted solution is best. |  |  |  |
| 5 |  | Work with provider to upgrade and maintain RT installation. | 4 |  |  |
| 6 |  | Make an inventory of all of our ‘RT’ scrips and discard those which are no longer necessary for migration. |  |  | start no earlier than 2016-04-25 |
| 7 | 1.3 | **Migrate tape backup archive to BackBlaze.** |  |  | start no earlier than 2016-04-25 |
| 8 |  | Develop Python script or utilize other backup application to push data to BackBlaze |  |  | start no earlier than 2016-04-25 |
| 9 |  | Measure performance and reliability of process; backup data to tapes and BackBlaze | 8 |  | start no earlier than 2016-05-02 |
| 10 |  | Find a service provider who will export all of our tapes to BackBlaze or process these oureselves | 8 |  | start no earlier than 2016-05-02 |
| 11 |  | Re-write documentation on backing up user, project data, and restoration to conform to BackBlaze backup system. | 10 |  | start no earlier than 2016-05-09 |
| 12 | 1.4 | **Migrate all web services, except ShinyServer, to Heroku, including DVN.** |  |  |  |
| 13 |  | Give Raman access to a basic Heroku account and ask him to deploy Dataverse Network to its and its components. |  |  |  |
| 14 | 1.4.2 | **Create a Heroku account and deploy Latanya’s PHP application to it.** |  |  |  |
| 15 |  | If successful, work with Latanya to migrate one of her websites entirely to Heroku to test the viability of this environment. |  |  |  |
| 16 |  | Work with Heroku to determine enterprise pricing for the amount of web sites we host. |  |  |  |
| 17 |  | Determine the best method to migrate our users permissions to Heroku: How much CPU time should they get? How much memory should they get? Should they be allowed to provision as many websites as they want, etc. |  |  |  |
| 18 |  | Determine the best method for file storage on Heroku — using an S3 bucket, connecting to our local NetApp, etc. |  |  |  |
| 19 |  | Work with Gary and Cris to decide how much support we provide for users in the Heroku environment: Do we help them setup GitHub repositories? Do we help them with basic PHP programming fundamentals, permissions? |  |  |  |
| 20 |  | Migrate all sites to Heroku. Provide a deadline. |  |  |  |
| 21 |  | Ask DVN to migrate their entire toolchain to Heroku. Provide a deadline. |  |  |  |
| 22 | 2 | **Migrate/upgrade essential services.** | 1 |  |  |
| 23 |  | Migrate appropriate DHCP options to Amazon DHCP |  |  |  |
| 24 |  | Migrate DNS to Route 53 |  |  |  |
| 25 |  | Upgrade/migrate LDAP to CentOS 6/Amazon |  |  | start no earlier than 2016-04-22 |
| 26 | 3 | **Rectify Puppet manifests with AWS** | 22 |  |  |
| 27 | 3.1 | **Migrate hmdc-admin repository to GitHub** |  |  |  |
| 28 |  | Mine hmdc-admin for passwords and remove or place passwords elsewhere. |  |  |  |
| 29 |  | Push de-password-ified hmdc-admin repository to GitHub. |  |  |  |
| 30 |  | Retire HUIT GIT account, but keep a backup of hmdc-admin on NFS in case need to look at commit history. |  |  |  |
| 31 |  | Test all pertinent modules on AWS, make changes accordingly. |  |  |  |
| 32 |  | Hiera-ify all data structures currently used in hmdc-admin, adding an $::operatingsystem entry to the Hiera tree. |  |  |  |
| 33 |  | Write spec tests for all modules which lack spec tests. |  |  |  |
| 34 |  | AWS migration preparations complete | 26 |  | start no earlier than 2016-04-25 |
| 35 | 5 | **Prepare RCE/AWS demo. environment** | 34SS |  | start no earlier than 2016-04-24 |
| 36 |  | Reconfigure AWS networking to expose a public interface for NX4 portal |  |  | start no earlier than 2016-04-22 |
| 37 |  | Install NX4/5 Portal (?) |  |  | start no earlier than 2016-04-24 |
| 38 |  | Install NX4/5 login nodes |  |  | start no earlier than 2016-04-25 |
| 39 |  | Deploy HTCondor collector/negotiator |  |  | start no earlier than 2016-04-25 |
| 40 |  | Deploy 2..3 high memory EC2 instances for HTCondor startd(s), permanent. |  |  | start no earlier than 2016-04-25 |

## Version 2 (saved 2016-05-02)

Complete tasks 1 → 2.

Added:

| ID | Task | Predecessors | Constraint | Resources |
| --- | --- | --- | --- | --- |
| 8 | Get BackBlaze certified with OGC/HUIT |  | start no earlier than 2016-07-29 | Evan |
| 9 | Buy and install host which performs backups |  | start no earlier than 2016-08-01 | Sarah |
| 10 | Work with BackBlaze to find the most efficient way of pushing this data |  | start no earlier than 2016-04-28 |  |
| 13 | Find out what we need to backup, and when |  | start no earlier than 2016-08-01 | Sarah |
| 16 | Migrate and decommission Jenkins, reuse. |  | start no earlier than 2016-07-29 | Evan |
| 17 | Work with Salesforce/Heroku to build an HMDC Heroku Enterprise contract |  | start no earlier than 2016-07-29 | Evan |
| 18 | Create a basic-enterprise HMDC Heroku account with some limits. |  | start no earlier than 2016-08-01 | Evan |
| 40 | Create cloud agnostic template for RCE deployment |  | start no earlier than 2016-07-29 | Bill |
| 43 | Experiment with using Offline ClassAds to scale |  | start no earlier than 2016-10-04 | Evan |
| 49 | **Production-ize RCE AWS/AZURE environment** | 42SS | start no earlier than 2016-05-02 |  |
| 50 | **Performance testing** |  | start no earlier than 2016-05-02 |  |
| 51 | Performance test NoMachine and XPRA latency, compared to local. |  | start no earlier than 2016-07-29 | Evan |
| 52 | **Investigate using New Relic, Boundary, or Opsview.** |  | start no earlier than 2016-05-02 |  |
| 53 | Demo solutions in the cloud environment. |  | start no earlier than 2016-07-29 | Bill |
| 54 | Set-up appropriate alerts. |  | start no earlier than 2016-08-01 | Bill |
| 55 | Migrate pertinent monitors from OpsView to cloud solution, could be OpsView. |  | start no earlier than 2016-08-01 | Bill |
| 56 | Document monitoring |  | start no earlier than 2016-07-29 | Bill |
| 57 | Integrate monitoring with Puppet if necessary |  | start no earlier than 2016-08-01 | Evan |
| 58 | Determine proper default for amount of compute machines available, test autoscaling under average load. |  | start no earlier than 2016-08-01 | Evan |
| 59 | Reconfigure RCE Cluster Tools (rce_submit.py) to, instead of polling, send email notification when job is active. |  | start no earlier than 2016-08-01 | Evan |
| 60 | **Migrate most services to Cloud** | 49SS | start no earlier than 2016-05-02 |  |
| 61 | Slowly de-commission execute nodes, sell or move to recycling. |  | start no earlier than 2016-07-29 | Sarah |
| 62 | De-commission RCE Login nodes, sell or cycle, migrate licenses to Cloud. |  | start no earlier than 2016-07-29 | Sarah |
| 63 | With all web apps migrated to Heroku, turn off and recycle www-* hosts. |  | start no earlier than 2016-07-29 | Sarah |
| 64 | Migrate pertinent fs-4 tasks to another host, turn off and recycle fs-4. |  | start no earlier than 2016-07-29 | Sarah |
| 65 | With RT migrated to cloud provider, turn off RT and recycle. |  | start no earlier than 2016-07-29 | Sarah |

Removed: 10 Find a service provider who will export all of our tapes to BackBlaze or process these oureselves

Changed:

| ID | Task | Predecessors | Other |
| --- | --- | --- | --- |
| 1 | **Offload unwanted or time-consuming services/responsibilities.** |  | constraint none → start no earlier than 2016-04-25 |
| 4 | Research which provider or hosted solution is best. |  | constraint none → start no earlier than 2016-07-29; resources none → Bill |
| 5 | Work with provider to upgrade and maintain RT installation. |  | constraint none → start no earlier than 2016-08-05; resources none → Bill |
| 6 | Make an inventory of all of our ‘RT’ scrips and discard those which are no longer necessary for migration. |  | constraint start no earlier than 2016-04-25 → start no earlier than 2016-07-29; resources none → Bill |
| 11 | Use HashBackup |  | was named Develop Python script or utilize other backup application to push data to BackBlaze; constraint start no earlier than 2016-04-25 → start no earlier than 2016-08-01 |
| 14 | Re-write documentation on backing up user, project data, and restoration to conform to BackBlaze backup system. | Find a service provider who will export all of our tapes to BackBlaze or process these oureselves → none | constraint start no earlier than 2016-05-09 → start no earlier than 2016-08-01 |
| 19 | Give Raman access to a basic Heroku account and ask him to deploy Dataverse Network to its and its components. |  | constraint none → start no earlier than 2016-07-29; resources none → Evan |
| 21 | If successful, work with Latanya to migrate one of her websites entirely to Heroku to test the viability of this environment. |  | constraint none → start no earlier than 2016-07-29; resources none → Brad |
| 22 | Work with Heroku to determine enterprise pricing for the amount of web sites we host. |  | constraint none → start no earlier than 2016-07-29; resources none → Evan |
| 23 | Determine the best method to migrate our users permissions to Heroku: How much CPU time should they get? How much memory should they get? Should they be allowed to provision as many websites as they want, etc. |  | constraint none → start no earlier than 2016-07-29; resources none → Brad |
| 24 | Determine the best method for file storage on Heroku — using an S3 bucket, connecting to our local NetApp, etc. |  | constraint none → start no earlier than 2016-07-29; resources none → Brad |
| 25 | Work with Gary and Cris to decide how much support we provide for users in the Heroku environment: Do we help them setup GitHub repositories? Do we help them with basic PHP programming fundamentals, permissions? |  | constraint none → start no earlier than 2016-07-29; resources none → Brad |
| 26 | Migrate all sites to Heroku. Provide a deadline. |  | constraint none → start no earlier than 2016-07-29; resources none → Evan |
| 27 | Ask DVN to migrate their entire toolchain to Heroku. Provide a deadline. |  | constraint none → start no earlier than 2016-08-01; resources none → Evan |
| 29 | Migrate appropriate DHCP options to Amazon DHCP |  | constraint none → start no earlier than 2016-08-01 |
| 30 | Migrate DNS to Route 53 |  | constraint none → start no earlier than 2016-08-01 |
| 31 | Upgrade/migrate LDAP to CentOS 6/7/Amazon |  | was named Upgrade/migrate LDAP to CentOS 6/Amazon; constraint start no earlier than 2016-04-22 → start no earlier than 2016-08-01 |
| 32 | **Rectify Puppet manifests with AWS/Cloud and CentOS 7** |  | was named Rectify Puppet manifests with AWS |
| 34 | Mine hmdc-admin for passwords and remove or place passwords elsewhere. |  | constraint none → start no earlier than 2016-09-16; resources none → Evan |
| 35 | Push de-password-ified hmdc-admin repository to GitHub. |  | constraint none → start no earlier than 2016-09-16; resources none → Evan |
| 36 | Retire HUIT GIT account, but keep a backup of hmdc-admin on NFS in case need to look at commit history. |  | constraint none → start no earlier than 2016-09-16; resources none → Evan |
| 37 | Test all pertinent modules on AWS, CentOS 7, make changes accordingly. |  | was named Test all pertinent modules on AWS, make changes accordingly.; constraint none → start no earlier than 2016-09-16; resources none → Evan |
| 38 | Hiera-ify all data structures currently used in hmdc-admin, adding an $::operatingsystem entry to the Hiera tree. |  | constraint none → start no earlier than 2016-09-16; resources none → Brad |
| 39 | Write spec tests for all modules which lack spec tests. |  | constraint none → start no earlier than 2016-09-16; resources none → Brad |
| 41 | AWS/AZURE/Cloud migration preparations complete |  | was named AWS migration preparations complete |
| 42 | **Prepare RCE/AWS/AZURE demo. environment** |  | was named Prepare RCE/AWS demo. environment |
| 44 | Reconfigure AWS/AZURE networking to expose a public interface for NX4 portal |  | was named Reconfigure AWS networking to expose a public interface for NX4 portal; constraint start no earlier than 2016-04-22 → start no earlier than 2016-08-01 |
| 45 | Install NX4/5 Portal (?) |  | constraint start no earlier than 2016-04-24 → start no earlier than 2016-10-04; resources none → Evan |
| 46 | Install NX4/5 login nodes |  | constraint start no earlier than 2016-04-25 → start no earlier than 2016-10-04; resources none → Evan |
| 47 | Deploy HTCondor collector/negotiator |  | constraint start no earlier than 2016-04-25 → start no earlier than 2016-10-04; resources none → Evan |
| 48 | Deploy 2..3 high memory EC2 instances for HTCondor startd(s), permanent. |  | constraint start no earlier than 2016-04-25 → start no earlier than 2016-10-04; resources none → Evan |

## Version 3 (saved 2016-05-24)

Note of the change: Update project plan

Complete tasks 2 → 5.

Added:

| ID | Task | Constraint |
| --- | --- | --- |
| 2 | Decommission old/unused hardware. | start no earlier than 2016-05-10 |
| 3 | Automate patching procedure | start no earlier than 2016-05-04 |
| 4 | Migrate CGA hardware out of data center | start no earlier than 2016-05-04 |
| 23 | Certify Heroku with OGC | start no earlier than 2016-05-04 |
| 36 | Build and test LDAP on CentOS 6/Amazon | start no earlier than 2016-05-10 |
| 37 | Get Amazon certified for Level 4 | start no earlier than 2016-05-10 |

Changed:

| ID | Task | Complete | Other |
| --- | --- | --- | --- |
| 7 | Research which provider or hosted solution is best. | 0% → 100% | resources Bill → Evan |
| 8 | Work with provider to upgrade and maintain RT installation. | 0% → 40% |  |
| 11 | Get BackBlaze certified with OGC/HUIT | 0% → 9% |  |
| 12 | Buy and install host which performs backups | 0% → 19% |  |
| 22 | Give Raman access to a basic Heroku account and ask him to deploy Dataverse Network to its and its components. | 0% → 69% |  |
| 34 | Migrate DNS to Route 53/Azure |  | was named Migrate DNS to Route 53 |
| 35 | **Upgrade/migrate LDAP to CentOS 6/7/Amazon** |  | resources Bill → none |
| 40 | Mine hmdc-admin for passwords and remove or place passwords elsewhere. | 0% → 11% |  |
| 70 | Migrate pertinent fs-4 tasks to another host, turn off and recycle fs-4. | 0% → 100% | resources Sarah → Evan |

## Version 4 (saved 2016-06-14)

Note of the change: Updating RCECloud project plan

Complete tasks 5 → 6.

Changed:

| ID | Task | Complete |
| --- | --- | --- |
| 8 | Work with provider to upgrade and maintain RT installation. | 40% → 90% |
| 9 | Make an inventory of all of our ‘RT’ scrips and discard those which are no longer necessary for migration. | 0% → 100% |
| 11 | Get BackBlaze certified with OGC/HUIT | 9% → 50% |
| 12 | Buy and install host which performs backups | 19% → 81% |

## Version 5 (saved 2016-06-14)

Note of the change: Reflect accurate

Complete tasks 6 → 5.

Changed:

| ID | Task | Complete | Other |
| --- | --- | --- | --- |
| 8 | Work with provider to upgrade and maintain RT installation. |  | resources Bill → Evan |
| 9 | Make an inventory of all of our ‘RT’ scrips and discard those which are no longer necessary for migration. | 100% → 0% | resources Bill → Evan |

## Version 6 (saved 2016-06-21)

Note of the change: Updating project plan after maintenance

Complete tasks 5 → 6.

Changed:

| ID | Task | Complete |
| --- | --- | --- |
| 2 | Decommission old/unused hardware. | 50% → 91% |
| 71 | With RT migrated to cloud provider, turn off RT and recycle. | 0% → 100% |

## Version 7 (saved 2016-07-29)

Note of the change: Update report

Complete tasks 6 → 9.

Changed:

| ID | Task | Complete | Other |
| --- | --- | --- | --- |
| 9 | Make an inventory of all of our ‘RT’ scrips and discard those which are no longer necessary for migration. | 0% → 100% |  |
| 25 | If successful, work with Latanya to migrate one of her websites entirely to Heroku to test the viability of this environment. | 0% → 100% | resources Brad → Evan |
| 26 | Work with Heroku to determine enterprise pricing for the amount of web sites we host. | 0% → 41% |  |
| 28 | Determine the best method for file storage on Heroku — using an S3 bucket, connecting to our local NetApp, etc. | 0% → 100% | resources Brad → Evan |
| 30 | Migrate all sites to Heroku. Provide a deadline. | 0% → 12% |  |
| 43 | Test all pertinent modules on AWS, CentOS 7, make changes accordingly. | 0% → 10% |  |

## Version 8 (saved 2016-09-07)

Note of the change: Update tasks

Complete tasks 9 → 15.

Changed:

| ID | Task | Complete |
| --- | --- | --- |
| 11 | Get BackBlaze certified with OGC/HUIT | 50% → 100% |
| 12 | Buy and install host which performs backups | 81% → 100% |
| 16 | Find out what we need to backup, and when | 0% → 100% |
| 22 | Give Raman access to a basic Heroku account and ask him to deploy Dataverse Network to its and its components. | 69% → 100% |
| 23 | Certify Heroku with OGC | 69% → 100% |
| 37 | Get Amazon certified for Level 4 | 0% → 100% |

## Version 9 (saved 2016-12-12)

Note of the change: Update report

Complete tasks 15 → 32.

Added:

| ID | Task | Predecessors | Constraint | Resources |
| --- | --- | --- | --- | --- |
| 32 | Work with Microsoft to build RCE-in-Azure launching pad |  | start no earlier than 2016-04-27 | Evan |
| 34 | Test RCE/Azure PoC with a small user-base |  | start no earlier than 2017-01-01 |  |
| 35 | **Re-design RCE/Azure to support multi-cloud submission** | 34 | start no earlier than 2017-01-01 |  |
| 36 | Use docker containers for applications rather than stored images, export with XPRA. |  | start no earlier than 2016-12-12 | Evan |
| 37 | Build REDIS queue and worker to distribute tasks to multiple clouds |  | start no earlier than 2017-02-16 | Evan |
| 38 | Build docker images for HTCondor negotiator, collector, and schedd for AWS with redundancy |  | start no earlier than 2017-02-16 | Evan |
| 39 | Redesign RCE/Azure application to submit jobs to redis queue and manage jobs through the redis queue and associated workers |  | start no earlier than 2017-03-16 | Evan |
| 40 | Scale NodeJS web service appropriately using npm-cluster/multiple workers |  | start no earlier than 2017-05-16 | Evan |
| 41 | Implement tests for NodeJS code |  | start no earlier than 2017-06-16 | Evan |
| 42 | Use Terraform to create abstract cloud configurations for AWS and Azure |  | start no earlier than 2016-12-12 | Evan |
| 43 | Use Packer to create rudimentary disk images (if necessary), although cloud-init should handle the entire process |  | start no earlier than 2016-12-12 | Evan |
| 44 | Auto-build and test docker images |  | start no earlier than 2017-03-16 | Evan |
| 45 | Implement monitoring for RCE Cloud |  | start no earlier than 2017-06-16 | Evan |
| 46 | Allow mounting of home directories - CI3/CI4 to Azure and CI3/CI4 to Amazon |  | start no earlier than 2017-05-01 | Evan |
| 47 | Pare down and migrate Puppet/Capistrano to GitHub with best practices |  | start no earlier than 2016-12-12 | Evan |
| 48 | RCE Cloud public beta release | 34, 35 | start no earlier than 2017-08-01 |  |
| 49 | Resolve any outstanding bugs acquired from BETA release | 48 | start no earlier than 2016-12-12 |  |
| 50 | Begin to migrate users to RCE Cloud | 49 | start no earlier than 2017-10-01 |  |

Removed: 38 Rectify Puppet manifests with AWS/Cloud and CentOS 7; 39 Migrate hmdc-admin repository to GitHub; 40 Mine hmdc-admin for passwords and remove or place passwords elsewhere.; 41 Push de-password-ified hmdc-admin repository to GitHub.; 42 Retire HUIT GIT account, but keep a backup of hmdc-admin on NFS in case need to look at commit history.; 43 Test all pertinent modules on AWS, CentOS 7, make changes accordingly.; 44 Hiera-ify all data structures currently used in hmdc-admin, adding an $::operatingsystem entry to the Hiera tree.; 45 Write spec tests for all modules which lack spec tests.; 46 Create cloud agnostic template for RCE deployment; 48 Prepare RCE/AWS/AZURE demo. environment; 49 Experiment with using Offline ClassAds to scale; 50 Reconfigure AWS/AZURE networking to expose a public interface for NX4 portal; 51 Install NX4/5 Portal (?); 52 Install NX4/5 login nodes; 53 Deploy HTCondor collector/negotiator; 54 Deploy 2..3 high memory EC2 instances for HTCondor startd(s), permanent.; 55 Production-ize RCE AWS/AZURE environment; 56 Performance testing; 57 Performance test NoMachine and XPRA latency, compared to local.; 58 Investigate using New Relic, Boundary, or Opsview.; 59 Demo solutions in the cloud environment.; 60 Set-up appropriate alerts.; 61 Migrate pertinent monitors from OpsView to cloud solution, could be OpsView.; 62 Document monitoring; 63 Integrate monitoring with Puppet if necessary; 64 Determine proper default for amount of compute machines available, test autoscaling under average load.; 65 Reconfigure RCE Cluster Tools (rce_submit.py) to, instead of polling, send email notification when job is active.

Changed:

| ID | Task | Complete | Predecessors | Other |
| --- | --- | --- | --- | --- |
| 2 | Decommission old/unused hardware. | 91% → 100% |  |  |
| 3 | Automate patching procedure |  |  | resources none → Evan |
| 4 | Migrate CGA hardware out of data center | 0% → 70% |  |  |
| 8 | Work with provider to upgrade and maintain RT installation. | 90% → 80% |  |  |
| 13 | Work with BackBlaze to find the most efficient way of pushing this data |  |  | resources none → Evan |
| 14 | Use HashBackup | 0% → 100% |  |  |
| 15 | Measure performance and reliability of process; backup data to tapes and BackBlaze | 0% → 100% |  |  |
| 17 | Re-write documentation on backing up user, project data, and restoration to conform to BackBlaze backup system. | 0% → 100% |  | constraint start no earlier than 2016-08-01 → start no earlier than 2016-11-20 |
| 19 | Migrate and decommission Jenkins, reuse. | 0% → 100% |  |  |
| 20 | Work with Salesforce/Heroku to build an HMDC Heroku Enterprise contract | 0% → 100% |  |  |
| 21 | Create a basic-enterprise HMDC Heroku account with some limits. | 0% → 100% |  |  |
| 23 | Certify Heroku with OGC |  |  | resources none → Evan |
| 26 | Work with Heroku to determine enterprise pricing for the amount of web sites we host. | 41% → 100% |  |  |
| 27 | Determine the best method to migrate our users permissions to Heroku: How much CPU time should they get? How much memory should they get? Should they be allowed to provision as many websites as they want, etc. | 0% → 100% |  | resources Brad → Evan |
| 29 | Work with Gary and Cris to decide how much support we provide for users in the Heroku environment: Do we help them setup GitHub repositories? Do we help them with basic PHP programming fundamentals, permissions? | 0% → 100% |  |  |
| 30 | Migrate all sites to Heroku. Provide a deadline. | 12% → 0% |  | constraint start no earlier than 2016-07-29 → none |
| 31 | Ask DVN to migrate their entire toolchain to the Cloud. Provide a deadline. | 0% → 1% |  | was named Ask DVN to migrate their entire toolchain to Heroku. Provide a deadline. |
| 33 | AWS/AZURE/Cloud migration preparations complete |  | Rectify Puppet manifests with AWS/Cloud and CentOS 7 → 1, 32 | constraint start no earlier than 2016-04-25 → start no earlier than 2016-12-12 |
| 51 | **Migrate/upgrade essential services.** |  | 1 → 1, 33 |  |
| 52 | Migrate appropriate DHCP options to Amazon DHCP | 0% → 100% |  |  |
| 53 | Migrate DNS to Route 53/Azure | 0% → 100% |  |  |
| 55 | Build and test LDAP on CentOS 7/Amazon | 0% → 100% |  | was named Build and test LDAP on CentOS 6/Amazon |
| 56 | Get Amazon certified for Level 4 with Direct Connect. |  |  | was named Get Amazon certified for Level 4 |
| 57 | **Migrate most services to Cloud** |  | Production-ize RCE AWS/AZURE environmentSS → 33 |  |
| 58 | Slowly de-commission execute nodes, sell or move to recycling. | 0% → 100% |  |  |
| 59 | De-commission RCE Login nodes, sell or cycle, migrate licenses to Cloud. | 0% → 100% |  |  |
| 60 | With all web apps migrated to Heroku, turn off and recycle www-* hosts. | 0% → 100% |  |  |

## Version 10 (saved 2016-12-12)

Note of the change: Update report including Heroku

Changed:

| ID | Task | Complete |
| --- | --- | --- |
| 30 | Migrate all sites to Heroku. Provide a deadline. | 0% → 75% |
| 31 | Ask DVN to migrate their entire toolchain to the Cloud. Provide a deadline. | 1% → 60% |

## Version 11 (saved 2017-02-06)

Note of the change: Updating cloud project plan

Removed: 43 Use Packer to create rudimentary disk images (if necessary), although cloud-init should handle the entire process

Changed:

| ID | Task | Complete | Other |
| --- | --- | --- | --- |
| 36 | Use docker containers for applications rather than stored images, export with XPRA. | 0% → 6% |  |
| 42 | Use Terraform to create abstract cloud configurations for AWS, Azure, Google |  | was named Use Terraform to create abstract cloud configurations for AWS and Azure |
| 44 | Implement monitoring for RCE Cloud | 0% → 10% |  |

## Version 12 (saved 2017-05-22)

Note of the change: Modify some tasks

Complete tasks 32 → 29.

Added:

| ID | Task | Constraint |
| --- | --- | --- |
| 35 | **Re-design authentication/authorization** | start no earlier than 2017-05-22 |
| 36 | Create a small web app — my.hmdc — to sync accounts. | start no earlier than 2017-05-22 |
| 37 | Work with Harvard IAM to develop security procedures around LDAP re-writes. | start no earlier than 2017-05-22 |
| 38 | Develop re-write engine to sync Harvard Key and local LDAP accounts. | start no earlier than 2017-05-22 |
| 39 | Re-write documentation wrt. account creation and meet with Soner’s team. | start no earlier than 2017-05-22 |
| 42 | Install Rancher environment to Clouds | start no earlier than 2017-05-22 |
| 43 | Install Kubernetes environment to Clouds | start no earlier than 2017-05-22 |
| 44 | Integrate Harvard Open Nebula | start no earlier than 2017-05-22 |

Removed: 46 Pare down and migrate Puppet/Capistrano to GitHub with best practices; 50 Migrate/upgrade essential services.; 51 Migrate appropriate DHCP options to Amazon DHCP; 52 Migrate DNS to Route 53/Azure; 53 Upgrade/migrate LDAP to CentOS 6/7/Amazon; 54 Build and test LDAP on CentOS 7/Amazon; 55 Get Amazon certified for Level 4 with Direct Connect.

Changed:

| ID | Task | Complete | Other |
| --- | --- | --- | --- |
| 47 | Redesign RCE/Azure application to submit jobs to redis queue and manage jobs through the redis queue and associated workers | 0% → 100% |  |
| 54 | SID public beta release |  | was named RCE Cloud public beta release |
